# Lab1

Schedule from MS Project, 2024-09-09 to 2025-11-21, costs in $, A marks actual dates.

## Calendars

- Стандартный: Mon-Fri 09:00-13:00, 14:00-18:00; Sat-Sun off.

## Resources

| Resource | Unit | Rate | Cost per use |
| --- | --- | --- | --- |
| Строительство дома |  |  |  |
| Архитектор |  |  | 550000 |
| МУП «Горгаз» |  |  | 700000 |
| МУП «Водоканал» |  |  | 500000 |
| АО «Водолей2 |  |  | 500000 |
| Рабочий1 |  | 10000 |  |
| Рабочий2 |  | 10000 |  |
| Рабочий3 |  | 10000 |  |
| Подсобник1 |  | 4000 |  |
| Подсобник2 |  | 4000 |  |
| Трактор |  |  | 70000 |
| Плотник1 |  | 150000 |  |
| Плотник2 |  | 15000 |  |
| АО «Неопласт» |  |  | 1200000 |
| Водопроводчик1 |  | 8000 |  |
| Водопроводчик2 |  | 8000 |  |
| Электрик |  | 10000 |  |
| АО «Газовик» |  |  | 250000 |
| ООО «Потолки» |  |  | 1500000 |
| Песок | T | 5000 |  |
| Щебень | Т | 6000 |  |
| Цемент | кг | 780000 | 250000 |
| Кирпич | шт. | 70 |  |
| Брус | шт. |  | 250000 |
| Доска обрезная | м3 | 70000 |  |
| Доска необрезная | м3 | 50000 |  |
| Шифер | лист |  | 400000 |
| Электропровод | м. |  | 150000 |
| Электросчетчик | шт. |  | 50000 |
| Труба водопроводная | шт. |  | 350000 |
| Труба канализационная | шт. |  | 300000 |
| Штукатурка | кг |  | 1500000 |
| Потолок | м2 | 1500 |  |
| Окно | шт. | 100000 |  |
| Дверь наружная | шт. |  | 200000 |
| Труба отопительная | шт. |  | 200000 |
| Котел | шт. |  | 400000 |
| Печь газовая | шт. |  | 200000 |
| Ванна | шт. | 450000 |  |
| Унитаз компакт | шт. | 200000 |  |
| Раковина | шт. | 160000 |  |
| Кран | шт. | 70000 |  |
| Паркет | м2 | 5500 |  |
| Труба газовая | шт. |  | 500000 |
| Дверь внутренняя | шт. | 90000 |  |
| Доставка |  |  |  |
| ООО «Неопласт» |  |  | 100000 |
| Рабочий 3 |  |  |  |
| Унитаз компактный |  |  |  |
| Плотник3 |  | 30000 |  |

## Schedule

| ID | WBS | Task | Type | Duration | Start | Finish | Predecessors | Complete | Remaining | Total slack | Free slack | Constraint | Resources | Work | Cost |
| --- | --- | --- | --- | --- | --- | --- | --- | --- | --- | --- | --- | --- | --- | --- | --- |
| 1 | 1 | Начало проекта | milestone | 0d | 2024-09-09 | 2024-09-09 |  |  |  | 99d | 0d |  |  |  |  |
| 2 | 2 | **Утверждение проектов** |  | 100d | 2024-09-09 A | 2025-01-24 |  |  | 100d | 0d |  |  |  | 724h | 1,750,000 |
| 3 | 2.1 | Начало утверждения проектов | milestone | 0d | 2024-09-09 A | 2024-09-09 A | 1 | 100% |  |  |  |  |  |  |  |
| 4 | 2.2 | Утверждение проекта на строительство | milestone | 0d | 2024-09-09 | 2024-09-09 | 1 |  |  | 99.12d |  | finish no earlier than 2024-09-09 | Архитектор | 4h | 550,000 |
| 5 | 2.3 | Утверждение проекта на газ |  | 100d | 2024-09-09 | 2025-01-24 | 3 |  |  | 0d |  | finish no earlier than 2024-12-02 | МУП «Горгаз» | 480h | 700,000 |
| 6 | 2.4 | Утверждение проекта на водопровод и канализацию |  | 60d | 2024-09-09 | 2024-11-29 | 3 |  |  | 40d |  | finish no earlier than 2024-10-21 | МУП «Водоканал» | 240h | 500,000 |
| 7 | 2.5 | Утверждение проекта на отопление |  | 45d | 2024-09-09 | 2024-11-11 | 3 |  |  | 54.12d |  | finish no earlier than 2024-11-11 |  |  |  |
| 8 | 2.6 | Проекты утверждены | milestone | 0d | 2025-01-24 | 2025-01-24 | 4, 5, 6, 7 |  |  | 0d |  | finish no earlier than 2024-12-02 |  |  |  |
| 9 | 3 | **9. Строительство фундамента** |  | 52.83d | 2025-01-27 | 2025-04-09 |  |  |  | 0d |  |  |  | 680h | 1,955,244,050 |
| 10 | 3.1 | Начало закладки фундамента |  | 2d | 2025-01-27 | 2025-01-28 | 8 |  |  | 0d |  |  |  |  |  |
| 11 | 3.2 | Рытье траншей |  | 15.83d | 2025-01-29 | 2025-02-19 | 10 |  |  | 0d |  |  | Рабочий1; Подсобник1; Подсобник2; Рабочий2; Рабочий3; Трактор | 480h | 2,964,050 |
| 12 | 3.3 | Заливка фундамента |  | 5d | 2025-04-02 | 2025-04-09 | 11FS+30d |  |  | 0d |  |  | Рабочий1; Рабочий2; Рабочий3; Подсобник1; Подсобник2; Песок [10 T]; Щебень [10 Т]; Доска необрезная [3 м3]; Доставка [0.1%]; Цемент [2500 кг] | 200h | 1,952,280,000 |
| 13 | 3.4 | Фундамент завершен | milestone | 0d | 2025-04-09 | 2025-04-09 | 12 |  |  | 0d |  |  |  |  |  |
| 14 | 4 | **14. Каркас и крыша** |  | 110.83d | 2025-04-09 | 2025-09-11 |  |  |  | 0d |  |  |  | 3616h | 1,637,861,500 |
| 15 | 4.1 | Начало каркаса |  | 1d | 2025-04-09 | 2025-04-10 | 13 |  |  | 0d |  |  |  |  |  |
| 16 | 4.2 | Кладка стен |  | 60d | 2025-04-10 | 2025-07-03 | 15 |  |  | 0d |  |  | Подсобник2; Рабочий1; Рабочий2; Доставка [0.1%]; Кирпич [70000 шт.]; Потолок [1 м2]; Песок [6 T]; Рабочий3; Цемент [2000 кг]; Подсобник1 | 2400h | 1,583,671,500 |
| 17 | 4.3 | Перекрытие стен |  | 15d | 2025-07-03 | 2025-07-24 | 16 |  |  | 0d |  |  | Подсобник1; Подсобник2; Рабочий1; Рабочий2; Рабочий3; Брус [15 шт.]; Доставка [0.1%]; Доска обрезная [7 м3] | 600h | 5,450,000 |
| 18 | 4.4 | Установка крыши |  | 30d | 2025-07-24 | 2025-09-04 | 17 |  |  | 4.83d |  |  | Плотник1; Плотник2; Доска необрезная [1 м3]; Шифер [1 лист]; Доставка [0.1%] | 480h | 40,170,000 |
| 19 | 4.5 | Установка наружных дверей и окон |  | 7d | 2025-07-24 | 2025-08-04 | 17 |  |  | 27.83d |  |  | ООО «Неопласт»; Окно [9 шт.]; Дверь наружная [1 шт.] | 56h | 1,200,000 |
| 20 | 4.6 | Установка поло |  | 5d | 2025-07-24 | 2025-09-11 | 17 |  |  | 0d |  |  | Плотник1; Плотник2; Доска обрезная [10 м3]; Доставка [0.1%] | 80h | 7,370,000 |
| 21 | 4.7 | Каркас готов | milestone | 0d | 2025-09-11 | 2025-09-11 | 18, 19, 20 |  |  | 0d |  |  |  |  |  |
| 22 | 5 | **22. Коммуникации** |  | 11d | 2025-09-11 | 2025-09-26 |  |  |  | 0d |  |  |  | 240h | 3,280,000 |
| 23 | 5.1 | Начало установки коммуникаций |  | 1d | 2025-09-11 | 2025-09-12 | 21 |  |  | 0d |  |  |  |  |  |
| 24 | 5.2 | Проведение и подключение водопровода и канализации |  | 10d | 2025-09-12 | 2025-09-26 | 23 |  |  | 0d |  |  | Водопроводчик1; Водопроводчик2; Труба водопроводная [1 шт.]; Труба канализационная [1 шт.] | 160h | 1,930,000 |
| 25 | 5.3 | Установка и подключение электропроводки |  | 5d | 2025-09-12 | 2025-09-19 | 23 |  |  | 5d |  |  | Электрик; Электросчетчик [1 шт.]; Электропровод [100 м.] | 40h | 600,000 |
| 26 | 5.4 | Установка и подключение газовых коммуникаций |  | 10d | 2025-09-12 | 2025-09-26 | 23 |  |  | 0d |  |  | АО «Газовик»; Труба газовая [1 шт.] | 40h | 750,000 |
| 27 | 5.5 | Коммуникации готовы | milestone | 0d | 2025-09-26 | 2025-09-26 | 24, 25, 26 |  |  | 0d |  |  |  |  |  |

| ID | WBS | Task | Type | Duration | Start | Finish | Predecessors | Total slack | Constraint | Resources | Work | Cost |
| --- | --- | --- | --- | --- | --- | --- | --- | --- | --- | --- | --- | --- |
| 28 | 6 | **28. Внутренняя отделка** |  | 40d | 2025-09-26 | 2025-11-21 |  | 0d |  |  | 1160h | 28,092,000 |
| 29 | 6.1 | Начало отделки | milestone | 0d | 2025-09-26 | 2025-09-26 | 27 | 0d |  |  |  |  |
| 30 | 6.2 | Внутренние двери |  | 10d | 2025-09-26 | 2025-10-10 | 29 | 0d |  | Плотник1; Плотник2; Дверь внутренняя [10 шт.]; Доставка [0.1%] | 160h | 14,200,000 |
| 31 | 6.3 | Навесные потолки |  | 5d | 2025-10-10 | 2025-10-17 | 30 | 5d |  | ООО «Потолки»; Потолок [190 м2] | 40h | 1,785,000 |
| 32 | 6.4 | Отделка стен |  | 3d | 2025-10-28 | 2025-10-31 | 30 | 0d | as late as possible | Рабочий1; Рабочий2; Рабочий 3; Подсобник1; Подсобник2; Штукатурка [100 кг] | 120h | 2,172,000 |
| 33 | 6.5 | Монтаж отопления |  | 10d | 2025-10-10 | 2025-10-24 | 30 | 0d |  | Водопроводчик1; Водопроводчик2; Труба отопительная [1 шт.] | 160h | 1,480,000 |
| 34 | 6.6 | Установка оборудования, приборов, сантехники |  | 5d | 2025-10-24 | 2025-10-31 | 31, 33 | 0d |  | Водопроводчик1; Водопроводчик2; Котел [1 шт.]; Печь газовая [1 шт.]; Ванна [1 шт.]; Раковина [3 шт.]; Кран [4 шт.]; Унитаз компакт [2 шт.] | 80h | 2,850,000 |
| 35 | 6.7 | Настил полов |  | 15d | 2025-10-31 | 2025-11-21 | 32, 34 | 0d |  | Рабочий1; Рабочий2; Рабочий3; Подсобник1; Подсобник2; Паркет [190 м2] | 600h | 5,605,000 |
| 36 | 6.8 | Конец отделки | milestone | 0d | 2025-11-21 | 2025-11-21 | 35 | 0d |  |  |  |  |
| 37 | 6.9 | Конец проекта | milestone | 0d | 2025-11-21 | 2025-11-21 | 36 | 0d |  |  |  |  |
